# 项目计划

Schedule from MS Project, 2010-07-08 to 2010-08-30, A marks actual dates.

## Calendars

- 标准: Mon-Fri 08:00-12:00, 13:00-17:00; Sat-Sun off.

## Resources

| Resource |
| --- |
| 曹慧静 |
| 初琛 |
| 王奎 |
| 董浩亮 |

## Schedule

| ID | WBS | Task | Duration | Start | Finish | Predecessors | Complete | Remaining | Total slack | Constraint | Resources | Work | Actual work |
| --- | --- | --- | --- | --- | --- | --- | --- | --- | --- | --- | --- | --- | --- |
| 1 | 1 | **Android平台** | 18d | 2010-07-08 A | 2010-08-02 |  | 74% | 4.63d | 20d |  |  | 496h | 399.2h |
| 2 | 1.1 | **前期工作** | 4d | 2010-07-08 A | 2010-07-13 A |  | 100% |  |  |  |  | 72h | 72h |
| 3 | 1.1.1 | 平台研究 | 3d | 2010-07-08 A | 2010-07-12 A |  | 100% |  |  | start no earlier than 2010-07-08 | 董浩亮; 王奎 | 48h | 48h |
| 4 | 1.1.2 | 人员招募 | 2d | 2010-07-08 A | 2010-07-09 A |  | 100% |  |  | start no earlier than 2010-07-08 | 董浩亮 | 16h | 16h |
| 5 | 1.1.3 | IMS研究 | 1d | 2010-07-13 A | 2010-07-13 A | 3 | 100% |  |  |  | 董浩亮 | 8h | 8h |
| 6 | 1.2 | **Input Method Service** | 7d | 2010-07-15 A | 2010-07-23 A |  | 100% |  |  |  |  | 56h | 56h |
| 7 | 1.2.1 | 文档阅读 | 1d | 2010-07-15 A | 2010-07-15 A |  | 100% |  |  |  | 曹慧静 | 8h | 8h |
| 8 | 1.2.2 | 源代码阅读 | 2d | 2010-07-16 A | 2010-07-19 A | 7 | 100% |  |  |  | 曹慧静 | 16h | 16h |
| 9 | 1.2.3 | 运行小Demo | 1d | 2010-07-20 A | 2010-07-20 A | 8 | 100% |  |  |  | 曹慧静 | 8h | 8h |
| 10 | 1.2.4 | 与Keyboard原型整合 | 2d | 2010-07-21 A | 2010-07-22 A | 9 | 100% |  |  |  | 曹慧静 | 16h | 16h |
| 11 | 1.2.5 | 修改Keyboard原型并输入字符 | 1d | 2010-07-23 A | 2010-07-23 A | 10 | 100% |  |  |  | 曹慧静 | 8h | 8h |
| 12 | 1.3 | **Dynamic Keyboard** | 11d | 2010-07-12 A | 2010-07-26 |  | 95% | 0.5d | 25d |  |  | 88h | 84h |
| 13 | 1.3.1 | 静态键盘绘制 | 3d | 2010-07-12 A | 2010-07-14 A |  | 100% |  |  | start no earlier than 2010-07-12 | 王奎 | 24h | 24h |
| 14 | 1.3.2 | 触点捕捉 | 1d | 2010-07-15 A | 2010-07-15 A | 13 | 100% |  |  |  | 王奎 | 8h | 8h |
| 15 | 1.3.3 | 特殊字符输入 | 1d | 2010-07-16 A | 2010-07-16 | 14 | 50% | 0.5d | 31d |  | 王奎 | 8h | 4h |
| 16 | 1.3.4 | 动态键盘变化 | 3d | 2010-07-19 A | 2010-07-21 A | 15, 19 | 100% |  |  |  | 王奎 | 24h | 24h |
| 17 | 1.3.5 | 候选区域绘制 | 3d | 2010-07-22 A | 2010-07-26 A | 21 | 100% |  |  |  | 王奎 | 24h | 24h |
| 18 | 1.4 | **Input Backend** | 8d | 2010-07-15 A | 2010-07-26 |  | 93% | 0.6d | 25d |  |  | 64h | 59.2h |
| 19 | 1.4.1 | 拼音树的生成 | 2d | 2010-07-15 A | 2010-07-16 A |  | 100% |  |  |  | 初琛 | 16h | 16h |
| 20 | 1.4.2 | 根据拼音获取汉字 | 2d | 2010-07-19 A | 2010-07-20 A | 19 | 100% |  |  |  | 初琛 | 16h | 16h |
| 21 | 1.4.3 | 汉字翻页支持 | 1d | 2010-07-21 A | 2010-07-21 A | 20 | 100% |  |  |  | 初琛 | 8h | 8h |
| 22 | 1.4.4 | 词组输入 | 3d | 2010-07-22 A | 2010-07-26 | 21 | 80% | 0.6d | 25d |  | 初琛 | 24h | 19.2h |
| 23 | 1.5 | 系统集成 | 2d | 2010-07-27 A | 2010-07-28 A | 6, 12, 18 | 100% |  |  |  | 曹慧静; 王奎; 初琛; 董浩亮 | 64h | 64h |
| 24 | 1.6 | Buffer Time | 2d | 2010-07-29 A | 2010-07-30 A | 23 | 100% |  |  |  | 曹慧静; 王奎; 初琛; 董浩亮 | 64h | 64h |

| ID | WBS | Task | Duration | Start | Finish | Predecessors | Complete | Remaining | Total slack | Free slack | Constraint | Resources | Work | Actual work |
| --- | --- | --- | --- | --- | --- | --- | --- | --- | --- | --- | --- | --- | --- | --- |
| 25 | 1.7 | **后期任务** | 3d | 2010-07-29 | 2010-08-02 |  |  |  | 20d |  |  |  | 88h |  |
| 26 | 1.7.1 | 代码重构 | 3d | 2010-07-29 | 2010-08-02 | 23 |  |  | 20d |  |  | 董浩亮 | 24h |  |
| 27 | 1.7.2 | 性能优化 | 2d | 2010-07-29 | 2010-07-30 | 23 |  |  | 21d |  |  | 董浩亮 | 16h |  |
| 28 | 1.7.3 | 南方模糊音 | 2d | 2010-07-29 | 2010-07-30 | 23 |  |  | 21d |  |  | 初琛 | 16h |  |
| 29 | 1.7.4 | 选项设置 | 2d | 2010-07-29 | 2010-07-30 | 23 |  |  | 21d |  |  | 王奎 | 16h |  |
| 30 | 1.7.5 | 词频排序 | 2d | 2010-07-29 | 2010-07-30 | 23 |  |  | 21d |  |  | 初琛 | 16h |  |
| 31 | 2 | **Iphone平台** | 33d | 2010-07-15 A | 2010-08-30 |  | 24% | 24.93d | 0d |  |  |  | 504h | 80h |
| 32 | 2.1 | **前期技术** | 5d | 2010-07-15 A | 2010-07-21 A |  | 100% |  |  |  |  |  | 32h | 32h |
| 33 | 2.1.1 | Iphone平台搭建 | 1d | 2010-07-15 A | 2010-07-15 A |  | 100% |  |  |  |  | 董浩亮 | 8h | 8h |
| 34 | 2.1.2 | 运行小Demeo | 1d | 2010-07-16 A | 2010-07-16 A | 33 | 100% |  |  |  |  |  |  |  |
| 35 | 2.1.3 | 学习Objective-C | 2d | 2010-07-19 A | 2010-07-20 A | 34 | 100% |  |  |  |  | 董浩亮 | 16h | 16h |
| 36 | 2.1.4 | 图形图像绘制 | 1d | 2010-07-21 A | 2010-07-21 A | 35 | 100% |  |  |  |  | 董浩亮 | 8h | 8h |
| 37 | 2.2 | **输入法前端** | 17d | 2010-07-22 A | 2010-08-13 |  | 46% | 9.15d | 9d | 4d |  |  | 104h | 48h |
| 38 | 2.2.1 | 键盘绘制 | 2d | 2010-07-22 A | 2010-07-23 A | 36 | 100% |  |  |  |  | 董浩亮 | 16h | 16h |
| 39 | 2.2.2 | 按键捕捉 | 1d | 2010-07-26 A | 2010-07-26 A | 38 | 100% |  |  |  |  | 董浩亮 | 8h | 8h |
| 40 | 2.2.3 | 界面切换 | 1d | 2010-08-09 | 2010-08-09 |  |  |  | 9d |  | start no earlier than 2010-08-09 | 王奎 | 8h |  |
| 41 | 2.2.4 | 键盘动态布局 | 2d | 2010-07-28 A | 2010-07-29 A | 40 | 100% |  |  |  |  | 董浩亮 | 16h | 16h |
| 42 | 2.2.5 | 方向切换 | 1d | 2010-08-03 | 2010-08-03 | 43 |  |  | 17d |  |  | 董浩亮 | 8h |  |
| 43 | 2.2.6 | 特殊字符处理 | 2d | 2010-07-30 A | 2010-08-02 | 41 | 50% | 1d | 17d | 0d |  | 董浩亮 | 16h | 8h |
| 44 | 2.2.7 | 候选区绘制 | 2d | 2010-08-10 | 2010-08-11 | 40 |  |  | 9d | 0d |  | 王奎 | 16h |  |
| 45 | 2.2.8 | 候选区按键捕捉 | 2d | 2010-08-12 | 2010-08-13 | 44 |  |  | 9d |  |  | 王奎 | 16h |  |
| 46 | 2.3 | **输入法后端** | 22d | 2010-07-21 | 2010-08-19 |  |  |  | 0d |  |  |  | 80h |  |
| 47 | 2.3.1 | 拼音树生成 | 1d | 2010-07-21 | 2010-07-21 | 35 |  |  | 21d |  |  | 董浩亮 | 8h |  |
| 48 | 2.3.2 | 中文单字输入 | 2d | 2010-08-09 | 2010-08-10 |  |  |  | 0d |  | start no earlier than 2010-08-09 | 初琛 | 16h |  |
| 49 | 2.3.3 | 中文词组输入 | 2d | 2010-08-11 | 2010-08-12 | 48 |  |  | 0d |  |  | 初琛 | 16h |  |
| 50 | 2.3.4 | 翻页接口支持 | 2d | 2010-08-13 | 2010-08-16 | 49 |  |  | 0d |  |  | 初琛 | 16h |  |
| 51 | 2.3.5 | 南方模糊音支持 | 3d | 2010-08-17 | 2010-08-19 | 50 |  |  | 0d |  |  | 初琛 | 24h |  |

| ID | WBS | Task | Duration | Start | Finish | Predecessors | Total slack | Free slack | Constraint | Resources | Work |
| --- | --- | --- | --- | --- | --- | --- | --- | --- | --- | --- | --- |
| 52 | 2.4 | **文本编辑器** | 8d | 2010-08-09 | 2010-08-18 |  | 1d |  |  |  | 64h |
| 53 | 2.4.1 | 文本绘制与显示 | 2d | 2010-08-09 | 2010-08-10 |  | 1d | 0d | start no earlier than 2010-08-09 | 曹慧静 | 16h |
| 54 | 2.4.2 | 载入与保存 | 1d | 2010-08-11 | 2010-08-11 | 53 | 1d | 0d |  | 曹慧静 | 8h |
| 55 | 2.4.3 | 复制粘贴 | 1d | 2010-08-12 | 2010-08-12 | 54 | 1d | 0d |  | 曹慧静 | 8h |
| 56 | 2.4.4 | 撤销 | 2d | 2010-08-13 | 2010-08-16 | 55 | 1d | 0d |  | 曹慧静 | 16h |
| 57 | 2.4.5 | 方向切换 | 2d | 2010-08-17 | 2010-08-18 | 56 | 1d |  |  | 曹慧静 | 16h |
| 58 | 2.5 | **系统集成** | 4d | 2010-08-20 | 2010-08-25 |  | 0d |  |  |  | 128h |
| 59 | 2.5.1 | 前端与后端集成 | 2d | 2010-08-20 | 2010-08-23 | 37, 46 | 5d |  |  | 初琛; 王奎 | 32h |
| 60 | 2.5.2 | 文本编辑器与输入法集成 | 2d | 2010-08-20 | 2010-08-23 | 46, 52 | 0d |  |  | 王奎; 曹慧静 | 32h |
| 61 | 2.5.3 | 系统整体测试 | 2d | 2010-08-24 | 2010-08-25 | 60 | 0d |  |  | 初琛; 王奎; 董浩亮; 曹慧静 | 64h |
| 62 | 2.6 | Buffer Time | 3d | 2010-08-26 | 2010-08-30 | 61 | 0d |  |  | 初琛; 王奎; 董浩亮; 曹慧静 | 96h |
